# TFG

Schedule from MS Project, 2025-11-24 to 2026-09-02, costs in €.

## Calendars

- Estándar: Mon-Fri 09:00-13:00, 15:00-19:00; Sat-Sun off.

## Resources

| Resource |
| --- |
| Luis Carmona Berdugo |
| Aurelio López Fernández |
| Vicente de Vides Rodríguez |
| Iván Segura Carmona |
| Marc Ríos Cadena |

## Schedule

| ID | WBS | Task | Type | Duration | Start | Finish | Resources | Work | Cost |
| --- | --- | --- | --- | --- | --- | --- | --- | --- | --- |
| 1 | 1 | **VitalXAI** |  | 203d? | 2025-11-24 | 2026-09-02 |  | 459h | 9,592.8 |
| 2 | 1.1 | **0. Planificación del Proyecto** |  | 70d? | 2025-11-24 | 2026-02-27 |  | 42h | 885 |
| 3 | 1.1.1 | 0.1 Reunión inicial | manual | 1d | 2025-11-24 | 2025-11-24 | Luis Carmona Berdugo [50%]; Aurelio López Fernández [50%] | 3h | 105 |
| 4 | 1.1.2 | 0.2 Redacción del Plan de Proyecto | manual | 49d | 2025-11-25 | 2026-01-30 | Luis Carmona Berdugo | 25h | 500 |
| 5 | 1.1.3 | 0.3 Inicialización del marco tecnológico | manual | 10d | 2026-02-02 | 2026-02-13 | Luis Carmona Berdugo | 8h | 160 |
| 6 | 1.1.4 | 0.4 Cronograma en Microsoft Project | manual | 10d | 2026-02-16 | 2026-02-27 | Luis Carmona Berdugo | 6h | 120 |
| 7 | 1.2 | **1. Infraestructura y Seguridad** |  | 12d | 2026-03-02 | 2026-03-17 |  | 70h | 1,445 |
| 8 | 1.2.1 | 1.1 Diseño del modelo de datos en MySQL | manual | 2d | 2026-03-02 | 2026-03-03 | Luis Carmona Berdugo [85%]; Vicente de Vides Rodríguez [15%] | 10h | 245 |
| 9 | 1.2.2 | 1.2 Backend FastAPI y conexión a la BD | manual | 2d | 2026-03-04 | 2026-03-05 | Luis Carmona Berdugo | 14h | 280 |
| 10 | 1.2.3 | 1.3 Registro, login y cierre de sesión | manual | 2d | 2026-03-06 | 2026-03-09 | Luis Carmona Berdugo | 12h | 240 |
| 11 | 1.2.4 | 1.4 Pantallas de autenticación | manual | 2d | 2026-03-09 | 2026-03-10 | Luis Carmona Berdugo | 8h | 160 |
| 12 | 1.2.5 | 1.5 Hashing de contraseñas y tokens de sesión | manual | 3d | 2026-03-10 | 2026-03-12 | Luis Carmona Berdugo | 6h | 120 |
| 13 | 1.2.6 | 1.6 Protección CSRF y limitación de peticiones | manual | 2d | 2026-03-11 | 2026-03-13 | Luis Carmona Berdugo | 6h | 120 |
| 14 | 1.2.7 | 1.7 Pruebas de compatibilidad de librerías y entorno | manual | 2d | 2026-03-12 | 2026-03-16 | Luis Carmona Berdugo | 6h | 120 |
| 15 | 1.2.8 | 1.8 Pruebas de seguridad e inyección SQL | manual | 2d | 2026-03-16 | 2026-03-17 | Luis Carmona Berdugo | 8h | 160 |
| 16 | 1.3 | **2. Motor de diagnóstico** |  | 10d | 2026-03-18 | 2026-03-31 |  | 41h | 820 |
| 17 | 1.3.1 | 2.1 Carga y caché de modelos preentrenados | manual | 3d | 2026-03-18 | 2026-03-20 | Luis Carmona Berdugo | 15h | 300 |
| 18 | 1.3.2 | 2.2 Predicción y pantalla de disgnóstico | manual | 3d | 2026-03-23 | 2026-03-25 | Luis Carmona Berdugo | 18h | 360 |
| 19 | 1.3.3 | 2.3 Informe PDF del diagnóstico | manual | 4d | 2026-03-26 | 2026-03-31 | Luis Carmona Berdugo | 8h | 160 |
| 20 | 1.4 | **3. Explicabilidad** |  | 8d | 2026-04-01 | 2026-04-10 |  | 48h | 1,048.8 |
| 21 | 1.4.1 | 3.1 Saliency Maps | manual | 2d | 2026-04-01 | 2026-04-02 | Luis Carmona Berdugo [90%]; Iván Segura Carmona [10%] | 10h | 230 |
| 22 | 1.4.2 | 3.2 SmoothGrad | manual | 1d | 2026-04-03 | 2026-04-03 | Luis Carmona Berdugo | 8h | 160 |
| 23 | 1.4.3 | 3.3 Grad-CAM | manual | 2d | 2026-04-06 | 2026-04-07 | Iván Segura Carmona [8%]; Luis Carmona Berdugo [92%] | 12h | 268.8 |
| 24 | 1.4.4 | 3.4 Mapas de atención | manual | 1d | 2026-04-08 | 2026-04-08 | Luis Carmona Berdugo | 8h | 160 |
| 25 | 1.4.5 | 3.5 Integración de las explicaciones en el diagnóstico | manual | 1d | 2026-04-09 | 2026-04-09 | Luis Carmona Berdugo | 6h | 120 |
| 26 | 1.4.6 | 3.6 Revisión de coherencia clínica con asesor | manual | 1d | 2026-04-10 | 2026-04-10 | Luis Carmona Berdugo [75%]; Marc Ríos Cadena [25%] | 4h | 110 |

| ID | WBS | Task | Type | Duration | Start | Finish | Resources | Work | Cost |
| --- | --- | --- | --- | --- | --- | --- | --- | --- | --- |
| 27 | 1.5 | **4. Entrenamiento CNN** |  | 10d | 2026-04-13 | 2026-04-24 |  | 52h | 1,058 |
| 28 | 1.5.1 | 4.1 Script de entrenamiento con validación cruzada | manual | 4d | 2026-04-13 | 2026-04-16 | Iván Segura Carmona [3%]; Luis Carmona Berdugo [97%] | 20h | 418 |
| 29 | 1.5.2 | 4.2 Ajuste de hiperparámetros y primeras ejecuciones | manual | 2d | 2026-04-17 | 2026-04-20 | Luis Carmona Berdugo | 14h | 280 |
| 30 | 1.5.3 | 4.3 Integración del entrenamiento en el backend | manual | 1d | 2026-04-21 | 2026-04-21 | Luis Carmona Berdugo | 8h | 160 |
| 31 | 1.5.4 | 4.4 Panel de monitorización del progreso | manual | 3d | 2026-04-22 | 2026-04-24 | Luis Carmona Berdugo | 10h | 200 |
| 32 | 1.6 | **5. Transformers y análisis XAI** |  | 22d | 2026-04-27 | 2026-05-26 |  | 62h | 1,313.2 |
| 33 | 1.6.1 | 5.1 Script de entrenamiento de arquitecturas Transformer | manual | 3d | 2026-04-27 | 2026-04-29 | Iván Segura Carmona [3%]; Luis Carmona Berdugo [97%] | 16h | 334.4 |
| 34 | 1.6.2 | 5.2 Script de explicabilidad cualitativa | manual | 3d | 2026-04-30 | 2026-05-04 | Luis Carmona Berdugo | 10h | 200 |
| 35 | 1.6.3 | 5.3 Script de métricas cuantitativas y calibración | manual | 3d | 2026-05-04 | 2026-05-06 | Iván Segura Carmona [8%]; Luis Carmona Berdugo [92%] | 12h | 268.8 |
| 36 | 1.6.4 | 5.4 Orquestación automática post-entreno | manual | 1d | 2026-05-07 | 2026-05-08 | Luis Carmona Berdugo | 6h | 120 |
| 37 | 1.6.5 | 5.5 Entrenamiento de Deit, Swin y ViT | manual | 5d | 2026-05-11 | 2026-05-15 | Luis Carmona Berdugo | 14h | 280 |
| 38 | 1.6.6 | 5.6 Revisión de resultados con el asesor de deep learning | manual | 7d | 2026-05-18 | 2026-05-26 | Iván Segura Carmona [25%]; Luis Carmona Berdugo [75%] | 4h | 110 |
| 39 | 1.7 | **6. Validación externa** |  | 10d | 2026-05-19 | 2026-06-01 |  | 26h | 548.8 |
| 40 | 1.7.1 | 6.1 Comparación estadística: ranking y test de Wilcoxon | manual | 2d | 2026-05-19 | 2026-05-20 | Iván Segura Carmona [8%]; Luis Carmona Berdugo [92%] | 12h | 268.8 |
| 41 | 1.7.2 | 6.2 Validación externa y test de DeLong | manual | 2d | 2026-05-21 | 2026-05-22 | Luis Carmona Berdugo | 14h | 280 |
| 42 | 1.8 | **7. Laboratorio MLOps** |  | 10d? | 2026-05-25 | 2026-06-05 |  | 66h | 1,320 |
| 43 | 1.8.1 | 7.1 Integración de la API de Groq | manual | 1d | 2026-05-25 | 2026-05-25 | Luis Carmona Berdugo | 8h | 160 |
| 44 | 1.8.2 | 7.2 Diseño del prompt del asistente | manual | 2d | 2026-05-26 | 2026-05-27 | Luis Carmona Berdugo | 12h | 240 |
| 45 | 1.8.3 | 7.3 Asistente conversacional del laboratorio | manual | 2d | 2026-05-28 | 2026-05-29 | Luis Carmona Berdugo | 14h | 280 |
| 46 | 1.8.4 | 7.4 Lanzamiento de experimentos desde el chat | manual | 1d | 2026-06-01 | 2026-06-01 | Luis Carmona Berdugo | 8h | 160 |
| 47 | 1.8.5 | 7.5 Cola de trabajos y ejecución asíncrona | manual | 1d | 2026-06-02 | 2026-06-02 | Luis Carmona Berdugo | 8h | 160 |
| 48 | 1.8.6 | 7.6 Internacionalización de la plataforma | manual | 1d | 2026-06-03 | 2026-06-03 | Luis Carmona Berdugo | 8h | 160 |
| 49 | 1.8.7 | 7.7 Vistas de resultados, rankings y curvas ROC | manual | 1d | 2026-06-05 | 2026-06-05 | Luis Carmona Berdugo | 8h | 160 |
| 50 | 1.9 | **8. Documentación y cierre** |  | 63d? | 2026-06-08 | 2026-09-02 |  | 52h | 1,154 |
| 51 | 1.9.1 | 8.1 Benchmarking final con todas las arqitecturas | manual | 10d | 2026-06-08 | 2026-06-19 | Iván Segura Carmona [5%]; Luis Carmona Berdugo [90%]; Marc Ríos Cadena [5%] | 18h | 414 |
| 52 | 1.9.2 | 8.2 Redacción de la memoria y manuales | manual | 50d | 2026-06-22 | 2026-08-28 | Luis Carmona Berdugo | 30h | 600 |
| 53 | 1.9.3 | 8.3 Reunión final y cierre | manual | 3d | 2026-08-31 | 2026-09-02 | Aurelio López Fernández [50%]; Luis Carmona Berdugo [50%] | 4h | 140 |
